# caArray

Schedule from MS Project, 2007-04-02 to 2007-11-13, A marks actual dates.
Project Schedule
5AM Solutions

## Calendars

- Standard: Mon-Fri 08:00-12:00, 13:00-17:00; Sat-Sun off.

## Resources

| Resource |
| --- |
| etavela |
| smatyas |
| bgendleman |
| rdaly |
| jpike |
| rsrinavasa |
| smiller |

## Schedule

| ID | WBS | Task | Duration | Start | Finish | Predecessors | Complete | Remaining | Baseline start | Baseline finish | Baseline duration | Total slack | Free slack | Constraint | Deadline | Resources | Work | Actual work |
| --- | --- | --- | --- | --- | --- | --- | --- | --- | --- | --- | --- | --- | --- | --- | --- | --- | --- | --- |
| 1 | 1 | **caArray 2.0** | 162d | 2007-04-02 A | 2007-11-13 |  | 16% | 136.12d | 2007-04-02 | 2007-05-21 | 35.75d? | 0d |  |  |  |  | 887.28h | 851.88h |
| 2 | 1.1 | **Inception Phase** | 33.3d | 2007-04-02 A | 2007-05-17 |  | 96% | 1.45d | 2007-04-02 | 2007-05-15 | 32d | 128.7d |  |  |  |  | 879.28h | 851.88h |
| 3 | 1.1.1 | **Inception Iteration 1** | 33.3d | 2007-04-02 A | 2007-05-17 |  | 96% | 1.45d | 2007-04-02 | 2007-05-15 | 32d | 128.7d |  |  |  |  | 879.28h | 851.88h |
| 4 | 1 | **Project Management** | 31.25d | 2007-04-02 A | 2007-05-15 |  | 92% | 2.53d | 2007-04-02 | 2007-05-15 | 31.25d | 0d |  |  |  |  | 20h | 19.76h |
| 5 | 1.1.1.1.1 | Plan the project | 12d | 2007-04-02 A | 2007-04-19 |  | 95% | 0.6d | 2007-04-02 | 2007-04-19 | 12d | -1.25d | 0d | start no earlier than 2007-04-02 |  | rdaly [5%]; bgendleman | 20h | 19.76h |
| 6 | 1.4 | Plan Remainder of Initial Iteration | 1d | 2007-04-19 A | 2007-04-19 A |  | 100% |  | 2007-04-19 | 2007-04-19 | 1d |  |  | start no earlier than 2007-04-19 |  |  |  |  |
| 7 | 1.8 | Plan for Next Iteration | 5d | 2007-05-07 A | 2007-05-11 | 12FF | 95% | 0.25d | 2007-05-07 | 2007-05-11 | 5d | -17.25d | 0d |  |  |  |  |  |
| 8 | 1.1.1.1.4 | **Finalize Deliverables** | 31.25d | 2007-04-02 A | 2007-05-15 |  | 57% | 13.39d | 2007-04-02 | 2007-05-15 | 31.25d | 0d |  |  |  |  |  |  |
| 9 | 1.1.1.1.4.1 | March Status Report | 2h | 2007-04-16 A | 2007-04-16 A |  | 100% |  | 2007-04-16 | 2007-04-16 | 2h |  |  | start no earlier than 2007-04-16 | 2007-04-18 |  |  |  |
| 10 | 1.1.1.1.4.2 | April Status Report | 2h | 2007-05-15 A | 2007-05-15 A |  | 100% |  | 2007-05-15 | 2007-05-15 | 2h |  |  | start no earlier than 2007-05-15 | 2007-05-15 |  |  |  |
| 11 | 1.1.1.1.4.3 | Release Risk List | 2h | 2007-04-02 | 2007-04-02 |  |  |  | 2007-04-02 | 2007-04-02 | 2h | 12.5d |  |  | 2007-05-15 |  |  |  |
| 12 | 1.9 | Release Software Development Plan | 1d | 2007-05-11 A | 2007-05-11 |  | 50% | 0.5d | 2007-05-11 | 2007-05-11 | 1d | -17.25d | 0d | start no earlier than 2007-05-11 |  |  |  |  |
| 13 | 3 | **Requirements** | 30.5d | 2007-04-02 A | 2007-05-14 |  | 98% | 0.65d | 2007-04-02 | 2007-05-14 | 30.35d | 0d |  |  |  |  | 160.6h | 155.8h |
| 14 | 3.1 | Define the Preliminary Vision | 5d | 2007-04-23 A | 2007-05-04 A | 5SS, 15FF | 100% |  | 2007-04-23 | 2007-05-04 | 5d |  |  | start no earlier than 1999-05-04 |  |  |  |  |
| 15 | 3.2 | **Elicit Stakeholder Needs** | 22.4d | 2007-04-04 A | 2007-05-04 A | 5SS | 100% |  | 2007-04-04 | 2007-05-04 | 22.75d |  |  |  |  |  | 45h | 45h |
| 16 | 1.1.1.2.2.1 | Live Meeting with NCICB Stakeholders | 4.38d | 2007-04-04 A | 2007-04-12 A |  | 100% |  | 2007-04-04 | 2007-04-11 | 4.38d |  |  | start no earlier than 2007-04-04 |  | bgendleman; rdaly; etavela [25%] | 30h | 30h |
| 17 | 1.1.1.2.2.2 | Teleconference with Columbia - Aris | 1h | 2007-04-09 A | 2007-04-09 A | 16 | 100% |  | 2007-04-09 | 2007-04-09 | 1h |  |  |  |  | bgendleman | 1h | 1h |
| 18 | 1.1.1.2.2.3 | Teleconference with Northwestern | 2h | 2007-04-20 A | 2007-04-20 A |  | 100% |  | 2007-04-20 | 2007-04-20 | 2h |  |  | start no earlier than 2007-04-20 |  | bgendleman | 2h | 2h |
| 19 | 1.1.1.2.2.4 | Live Meeting with Georgetown | 4h | 2007-04-23 A | 2007-04-23 A | 18 | 100% |  | 2007-04-27 | 2007-04-27 | 4h |  |  | start no earlier than 2007-04-23 |  | bgendleman | 4h | 4h |
| 20 | 1.1.1.2.2.5 | Live Meeting with Thomas Jefferson | 4h | 2007-04-27 A | 2007-04-27 A | 19 | 100% |  | 2007-04-27 | 2007-05-04 | 4h |  |  | start no earlier than 2007-04-26 |  | bgendleman | 4h | 4h |
| 21 | 1.1.1.2.2.6 | Live Meeting with U Pitt | 4h | 2007-05-03 A | 2007-05-04 A | 20 | 100% |  | 2007-05-04 | 2007-05-04 | 4h |  |  | start no earlier than 2007-04-30 |  | bgendleman | 4h | 4h |
| 22 | 3.3 | Identify and Describe Use Cases | 4d | 2007-04-18 A | 2007-04-23 A |  | 100% |  | 2007-04-18 | 2007-04-23 | 4d |  |  | finish no earlier than 2007-04-20 |  | bgendleman; rdaly | 56h | 56h |
| 23 | 3.5 | Refine the System Definition | 6.35d | 2007-04-24 A | 2007-05-04 A | 6, 22 | 100% |  | 2007-04-24 | 2007-05-10 | 6.25d |  |  | start no earlier than 2007-04-18 |  | bgendleman; etavela [10%] | 20h | 20h |
| 24 | 1.1.1.2.5 | **Implement Requirement and Test Traceability** | 3.25d | 2007-04-16 A | 2007-04-19 A |  | 100% |  | 2007-04-16 | 2007-04-20 | 4.6d |  |  |  |  |  | 3.6h | 3.6h |
| 25 | 1.1.1.2.5.1 | Determine Approach | 2.25d | 2007-04-16 A | 2007-04-19 A |  | 100% |  | 2007-04-16 | 2007-04-20 | 2.25d |  |  | start no earlier than 2007-04-16 |  | bgendleman [20%]; etavela [20%] | 3.6h | 3.6h |
| 26 | 3.6 | Manage Changing Requirements | 1d | 2007-04-27 A | 2007-05-04 A | 14SS | 100% |  | 2007-04-27 | 2007-05-04 | 1d |  |  | start no earlier than 2007-04-25 |  | bgendleman | 8h | 8h |

Notes:
- 16: expect follow up with Suba, Mervi and Xiaopeng as requirements contributors

| ID | WBS | Task | Duration | Start | Finish | Predecessors | Complete | Remaining | Baseline start | Baseline finish | Baseline duration | Total slack | Free slack | Constraint | Deadline | Resources | Work | Actual work |
| --- | --- | --- | --- | --- | --- | --- | --- | --- | --- | --- | --- | --- | --- | --- | --- | --- | --- | --- |
| 27 | 1.1.1.2.7 | **Finalize Deliverables** | 30.5d | 2007-04-02 A | 2007-05-14 |  | 83% | 5.23d | 2007-04-02 | 2007-05-14 | 30.35d | 0d |  |  |  |  | 28h | 23.2h |
| 28 | 1.1.1.2.7.1 | Requirements Management Plan | 0.25d | 2007-04-02 A | 2007-04-09 A |  | 100% |  | 2007-04-02 | 2007-04-09 | 0.25d |  |  |  |  | bgendleman | 2h | 2h |
| 29 | 1.1.1.2.7.2 | Finalize Questionnaire | 0.25d | 2007-04-02 A | 2007-04-02 A |  | 100% |  | 2007-04-02 | 2007-04-02 | 0.25d |  |  |  |  | bgendleman | 2h | 2h |
| 30 | 1.1.1.2.7.3 | Draft Vision Document | 1d | 2007-04-30 A | 2007-05-11 | 21, 14 | 90% | 0.1d | 2007-04-30 | 2007-05-11 | 1d | -16.75d | 0d |  |  | bgendleman | 8h | 7.2h |
| 31 | 1.1.1.2.7.4 | Draft Supplementary Spec | 1d | 2007-05-11 A | 2007-05-14 | 30 | 50% | 0.5d | 2007-05-11 | 2007-05-14 | 1d | -17.75d | 0d |  |  | bgendleman | 8h | 4h |
| 32 | 1.1.1.2.7.5 | Draft Use Case Model | 1d | 2007-04-27 A | 2007-05-03 A | 22 | 100% |  | 2007-04-27 | 2007-05-04 | 1d |  |  |  | 2007-05-04 | bgendleman | 8h | 8h |
| 33 | 4 | **Analysis and Design** | 33.3d | 2007-04-02 A | 2007-05-17 |  | 86% | 4.65d | 2007-04-02 | 2007-04-20 | 15d | 128.7d |  |  |  |  | 111.68h | 99.08h |
| 34 | 4.1 | Use Case Analysis (Manage Protocols) | 1d | 2007-04-05 A | 2007-04-05 A |  | 100% |  | 2007-04-05 | 2007-04-05 | 1d |  |  | start no earlier than 2007-04-05 |  | etavela | 8h | 8h |
| 35 | 1.1.1.3.2 | Use Case Design (Manage Protocols) | 1d | 2007-04-06 A | 2007-04-06 A | 34 | 100% |  | 2007-04-06 | 2007-04-06 | 1d |  |  |  |  | etavela | 8h | 8h |
| 36 | 1.1.1.3.3 | Vocabulary Management Subsystem Design | 4.95d | 2007-04-04 A | 2007-04-12 A |  | 100% |  | 2007-04-04 | 2007-04-12 | 4.95d |  |  | start no earlier than 2007-04-04 |  | etavela [10%]; jpike | 26.08h | 26.08h |
| 37 | 1.1.1.3.4 | Data Access Subsystem Design | 2.75d | 2007-04-09 A | 2007-04-13 A |  | 100% |  | 2007-04-09 | 2007-04-20 | 3d |  |  | start no earlier than 2007-04-09 | 2007-04-20 | rsrinavasa; etavela [25%] | 18h | 18h |
| 38 | 1.1.1.3.5 | MAGE-OM Façade | 4.5d | 2007-04-02 A | 2007-04-10 |  | 80% | 0.9d | 2007-04-02 | 2007-04-10 | 4.5d | 155d |  |  |  | rsrinavasa; etavela [25%] | 30h | 28.2h |
| 39 | 1.1.1.3.6 | **Finalize Deliverables** | 3.3d | 2007-05-14 A | 2007-05-17 |  | 50% | 1.65d | 2007-04-11 | 2007-04-19 | 6d | 128.7d |  |  |  |  | 21.6h | 10.8h |
| 40 | 1.1.1.3.6.1 | Release Candidate Software Architecture Document | 3d | 2007-05-14 A | 2007-05-17 |  | 50% | 1.5d | 2007-04-11 | 2007-04-19 | 5d | 128.7d |  | start no earlier than 2007-05-14 |  | etavela [90%] | 21.6h | 10.8h |
| 41 | 1.1.1.4 | **Implementation** | 32d | 2007-04-02 A | 2007-05-15 A |  | 100% |  | 2007-04-02 | 2007-05-15 | 32d |  |  |  |  |  | 393.2h | 393.2h |
| 42 | 1.1.1.4.1 | Structure the Implementation Model | 1.5d | 2007-04-02 A | 2007-04-04 A |  | 100% |  | 2007-04-02 | 2007-04-04 | 1.5d |  |  | start no earlier than 2007-04-09 | 2007-04-06 | etavela | 12h | 12h |
| 43 | 1.1.1.4.2 | Implement Vocabulary Subsystem | 3w | 2007-04-13 A | 2007-05-08 A | 42, 36 | 100% |  | 2007-04-12 | 2007-05-08 | 3w |  |  |  |  | jpike | 120h | 120h |
| 44 | 1.1.1.4.3 | Implement MAGE-OM | 2w | 2007-04-10 A | 2007-04-27 A | 42, 38 | 100% |  | 2007-04-10 | 2007-04-30 | 2w |  |  |  |  | rsrinavasa | 80h | 80h |
| 45 | 1.1.1.4.4 | Implement Data Access | 3d | 2007-04-16 A | 2007-04-30 A | 42 | 100% |  | 2007-04-16 | 2007-04-24 | 3d |  |  | start no earlier than 2007-04-16 | 2007-04-20 | rsrinavasa | 24h | 24h |
| 46 | 1.1.1.4.5 | Implement MAGE-OM Façade | 1.7w | 2007-04-18 A | 2007-05-15 A |  | 100% |  | 2007-04-19 | 2007-05-15 | 1.7w |  |  | start no earlier than 2007-04-18 |  | etavela [25%]; rsrinavasa | 50h | 50h |
| 47 | 1.1.1.4.6 | Implement Protocol Management | 2.2w | 2007-04-16 A | 2007-05-09 A | 35 | 100% |  | 2007-04-16 | 2007-05-09 | 2.1w |  |  | start no earlier than 2007-04-16 |  | jpike; rsrinavasa; etavela [10%] | 52h | 52h |
| 48 | 1.1.1.4.7 | Implement Protocol User Interface (minimal) | 3d | 2007-05-09 A | 2007-05-14 A | 47 | 100% |  | 2007-05-09 | 2007-05-14 | 3d |  |  |  |  | rsrinavasa; jpike | 48h | 48h |
| 49 | 1.1.1.4.8 | **Finalize Deliverables** | 1d | 2007-05-14 A | 2007-05-15 A |  | 100% |  | 2007-05-14 | 2007-05-15 | 1d |  |  |  |  |  | 7.2h | 7.2h |
| 50 | 1.1.1.4.8.1 | Release Architectural Prototype | 1d | 2007-05-14 A | 2007-05-15 A | 48 | 100% |  | 2007-05-14 | 2007-05-15 | 1d |  |  |  |  | etavela [90%] | 7.2h | 7.2h |

Notes:
- 44: 2 weeks anticipates that code generation will be a part of it

| ID | WBS | Task | Type | Duration | Start | Finish | Predecessors | Complete | Remaining | Baseline start | Baseline finish | Baseline duration | Total slack | Free slack | Constraint | Deadline | Resources | Work | Actual work |
| --- | --- | --- | --- | --- | --- | --- | --- | --- | --- | --- | --- | --- | --- | --- | --- | --- | --- | --- | --- |
| 51 | 5 | **Test** |  | 31.82d | 2007-04-02 A | 2007-05-15 |  | 69% | 9.71d | 2007-04-02 | 2007-05-15 | 31.07d | 130.18d |  |  |  |  | 27.8h | 22.04h |
| 52 | 1.1.1.5.1 | Meet with Indepdent QA |  | 2h | 2007-04-09 A | 2007-04-09 |  | 90% | 0.2h | 2007-04-09 | 2007-04-09 | 2h | 14.62d |  | finish no later than 2007-04-27 | 2007-04-27 | bgendleman [80%] | 1.6h | 1.44h |
| 53 | 1.1.1.5.2 | Implement System Tests Against Protocol Management | milestone | 0d | 2007-05-15 A | 2007-05-15 | 50 | 50% | 0d | 2007-05-15 | 2007-05-15 | 0d | 130.18d |  | start no earlier than 2007-05-14 |  | smatyas |  |  |
| 54 | 5.1 | Analyze and Identify Test Approach |  | 1d | 2007-04-02 A | 2007-04-27 |  | 50% | 0.5d | 2007-04-02 | 2007-04-27 | 1d | 3.6d | 0d |  |  | smatyas; etavela; bgendleman | 8h | 4h |
| 55 | 1.1.1.5.4 | **Finalize Deliverables** |  | 4.25d | 2007-04-27 A | 2007-05-03 |  | 75% | 1.06d | 2007-04-27 | 2007-05-04 | 5d | 0d |  |  |  |  | 18.2h | 16.6h |
| 56 | 1.1.1.5.4.1 | Release Test Plan |  | 2.6d | 2007-04-27 A | 2007-05-03 | 54 | 75% | 0.65d | 2007-04-27 | 2007-05-04 | 2.5d | -2.95d | 0d |  |  | smatyas; bgendleman [25%]; etavela [5%] | 18.2h | 16.6h |
| 57 | 6 | **Environment** |  | 30.25d | 2007-04-02 A | 2007-05-14 A |  | 100% |  | 2007-04-02 | 2007-05-14 | 30.25d |  |  |  |  |  | 136h | 136h |
| 58 | 1.1.1.6.1 | Launch Development Process |  | 6h | 2007-04-09 A | 2007-04-18 A |  | 100% |  | 2007-04-09 | 2007-04-18 | 6h |  |  | start no earlier than 2007-04-09 |  | smatyas; jpike; smiller; rsrinavasa | 12h | 12h |
| 59 | 1.1.1.6.2 | **Set Up Tools** |  | 20d | 2007-04-02 A | 2007-04-27 A |  | 100% |  | 2007-04-02 | 2007-04-27 | 20d |  |  |  |  |  | 76h | 76h |
| 60 | 1.1.1.6.2.1 | Set Up Maven |  | 4d | 2007-04-02 A | 2007-04-09 A |  | 100% |  | 2007-04-02 | 2007-04-09 | 4d |  |  | start no earlier than 2007-04-02 |  | smatyas [50%]; smiller [50%] | 16h | 16h |
| 61 | 1.1.1.6.2.2 | Set Up Continuous Integration |  | 1d | 2007-04-16 A | 2007-04-16 A |  | 100% |  | 2007-04-16 | 2007-04-16 | 1d |  |  | start no earlier than 2007-04-16 |  | smatyas | 8h | 8h |
| 62 | 1.1.1.6.2.3 | Set Up Eclipse |  | 2d | 2007-04-03 A | 2007-04-06 A |  | 100% |  | 2007-04-03 | 2007-04-06 | 2d |  |  | start no earlier than 2007-04-03 |  | jpike; smiller [50%] | 12h | 12h |
| 63 | 1.1.1.6.2.4 | Set Up Selenium |  | 2d | 2007-04-26 A | 2007-04-27 A | 61 | 100% |  | 2007-04-26 | 2007-04-27 | 2d |  |  | finish no earlier than 2007-04-27 | 2007-04-27 | smatyas | 16h | 16h |
| 64 | 1.1.1.6.2.5 | Set Up Code Quality Tools |  | 2d | 2007-04-02 A | 2007-04-09 A |  | 100% |  | 2007-04-02 | 2007-04-09 | 2d |  |  |  |  | smatyas; etavela | 24h | 24h |
| 65 | 1.1.1.6.3 | **Finalize Deliverables** |  | 19.25d | 2007-04-17 A | 2007-05-14 A |  | 100% |  | 2007-04-19 | 2007-05-14 | 17.25d |  |  |  |  |  | 48h | 48h |
| 66 | 1.1.1.6.3.1 | Release Development Case |  | 0.25d | 2007-05-14 A | 2007-05-14 A |  | 100% |  | 2007-05-14 | 2007-05-14 | 0.25d |  |  | start no earlier than 2007-05-14 |  | etavela | 2h | 2h |
| 67 | 1.1.1.6.3.2 | Release Guidelines for the Project |  | 1.25d | 2007-04-20 A | 2007-04-23 A |  | 100% |  | 2007-04-20 | 2007-04-23 | 1.25d |  |  | start no earlier than 2007-04-16 |  | etavela | 10h | 10h |
| 68 | 1.1.1.6.3.3 | Release Templates for the Project |  | 5.5d | 2007-04-17 A | 2007-04-30 A |  | 100% |  | 2007-04-19 | 2007-04-30 | 5.55d |  |  | finish no earlier than 2007-04-13 |  | smiller [50%]; etavela | 36h | 36h |
| 69 | 7 | **Configuration & Change Management** |  | 31.25d | 2007-04-02 A | 2007-05-15 |  | 85% | 4.81d | 2007-04-02 | 2007-05-15 | 31.25d | 0d |  |  |  |  | 30h | 26h |
| 70 | 7.1 | Plan Project Configuration and Change Control |  | 0.5d | 2007-04-20 A | 2007-04-20 A |  | 100% |  | 2007-04-20 | 2007-04-24 | 0.55d |  |  | finish no earlier than 2007-04-20 | 2007-05-15 | etavela; bgendleman | 8h | 8h |
| 71 | 1.1.1.7.2 | **Finalize Deliverables** |  | 31.25d | 2007-04-02 A | 2007-05-15 |  | 82% | 5.68d | 2007-04-02 | 2007-05-15 | 31.25d | 0d |  |  |  |  | 22h | 18h |
| 72 | 1.1.1.7.2.1 | Release Configuration Management Plan |  | 0.75d | 2007-04-02 A | 2007-05-15 A |  | 100% |  | 2007-04-02 | 2007-05-15 | 0.75d |  |  |  |  | etavela; bgendleman | 6h | 6h |
| 73 | 1.1.1.7.2.2 | G-Forge Implementation of the Change Control Process |  | 2d | 2007-04-02 A | 2007-05-14 |  | 75% | 0.5d | 2007-04-02 | 2007-05-14 | 2d | -17.75d | 0d |  |  | bgendleman | 16h | 12h |
| 74 | 1.1.1.8 | Inception Complete | milestone | 0d | 2007-05-15 | 2007-05-15 | 4, 5, 27, 8, 55, 65, 71 |  |  | 2007-05-15 | 2007-05-15 | 0d | -18.65d | 0d | start no earlier than 2007-05-15 | 2007-05-15 |  |  |  |

Notes:
- 60: Instructions documented on Wiki
- 62: Instructions documented on Wiki
- 64: Cobertura, PMD, CheckStyle, Simian, JUnit
- 67: UML, Java, JSP/HTML
- 68: Java, JSP/HTML / Use Case Summary / Use Case Specification / Vision / Traceability Matrix - will attempt to do in EA

| ID | WBS | Task | Duration | Start | Finish | Predecessors | Baseline start | Baseline finish | Baseline duration | Total slack | Free slack | Constraint | Deadline | Resources | Work |
| --- | --- | --- | --- | --- | --- | --- | --- | --- | --- | --- | --- | --- | --- | --- | --- |
| 75 | 1.2 | **Elaboration Phase** | 46d | 2007-05-22 | 2007-07-24 | 74 | 2007-05-15 | 2007-05-17 | 2.5d? | -23.25d | 0d |  |  |  | 8h |
| 76 | 1.2.1 | **Elaboration - Iteration 1** | 27d | 2007-05-22 | 2007-06-27 |  | 2007-05-15 | 2007-05-17 | 2.5d | -23.25d | 0d |  |  |  | 8h |
| 77 | 1 | **Project Management** | 24d | 2007-05-22 | 2007-06-22 | 74 | 2007-04-02 | 2007-05-15 | 31.25d | -23.25d | 0d |  |  |  | 8h |
| 78 | 1.2.1.1.1 | Inception Post Mortem | 8h | 2007-05-22 | 2007-05-22 |  | 2007-05-15 | 2007-05-17 | 20h | 45d |  | start no earlier than 2007-05-22 |  | smatyas | 8h |
| 79 | 1.4 | Plan Remainder of Initial Iteration | 1d | 2007-06-07 | 2007-06-07 |  | 2007-04-19 | 2007-04-19 | 1d | 33d |  | start no earlier than 2007-06-07 |  |  |  |
| 80 | 1.2.1.1.3 | Weekly Status Meetings | 1.5d | 2007-05-23 | 2007-05-24 |  |  |  |  | 43.5d |  | start no earlier than 2007-05-23 |  |  |  |
| 81 | 1.8 | Plan for Next Iteration | 1d | 2007-06-22 | 2007-06-22 | 85FF | 2007-05-07 | 2007-05-11 | 5d | 22d |  | start no earlier than 2007-06-20 |  |  |  |
| 82 | 1.2.1.1.5 | **Finalize Deliverables** | 22d | 2007-05-24 | 2007-06-22 |  | 2007-04-02 | 2007-05-15 | 31.25d | -25.25d | 0d |  |  |  |  |
| 83 | 1.2.1.1.5.1 | May Status Report | 2h | 2007-06-08 | 2007-06-08 |  | 2007-04-16 | 2007-04-16 | 2h | -36.25d | 0d | start no earlier than 2007-06-08 | 2007-04-18 |  |  |
| 84 | 1.2.1.1.5.2 | Update Risk List | 2h | 2007-05-24 | 2007-05-24 |  | 2007-04-02 | 2007-04-02 | 2h | -6.25d | 0d | start no earlier than 2007-05-24 | 2007-05-15 |  |  |
| 85 | 1.9 | Update Software Development Plan | 1d | 2007-06-22 | 2007-06-22 |  | 2007-05-11 | 2007-05-11 | 1d | 22d | 0d | start no earlier than 2007-06-22 |  |  |  |
| 86 | 1.2.1.2 | **Requirements** | 25d | 2007-05-22 | 2007-06-25 |  |  |  |  | 21d |  |  |  |  |  |
| 87 | 1.2.1.2.1 | Update Draft Documents | 3d | 2007-05-22 | 2007-05-24 |  |  |  |  | 42d | 0d | start no earlier than 2007-05-22 |  |  |  |
| 88 | 1.2.1.2.2 | Write Prioritized Use Cases | 10d | 2007-05-25 | 2007-06-07 |  |  |  |  | 19d | 0d | start no earlier than 2007-05-25 |  |  |  |
| 89 | 1.2.1.2.3 | Create Wireframes for targeted Ucs | 3d | 2007-06-08 | 2007-06-12 | 88 |  |  |  | 30d |  |  |  |  |  |
| 90 | 1.2.1.2.4 | Harmonize Models | 1d | 2007-05-24 | 2007-05-24 |  |  |  |  | 43d |  | start no earlier than 2007-05-24 |  |  |  |
| 91 | 1.2.1.2.5 | **Finalize Deliverables** | 22d | 2007-05-25 | 2007-06-25 |  |  |  |  | 21d |  |  |  |  |  |
| 92 | 1.2.1.2.5.1 | Finalize Vision | 1d | 2007-05-25 | 2007-05-25 | 87 |  |  |  | 42d |  |  |  |  |  |
| 93 | 1.2.1.2.5.2 | Finalize Supplemental Specification | 1d | 2007-05-25 | 2007-05-25 | 87 |  |  |  | 42d |  |  |  |  |  |
| 94 | 1.2.1.2.5.3 | UC Import Project Data | 1d | 2007-06-08 | 2007-06-08 | 88 |  |  |  | 19d | 0d |  |  |  |  |
| 95 | 1.2.1.2.5.4 | UC Sumbit Project Proposal | 1d | 2007-06-11 | 2007-06-11 | 94 |  |  |  | 21d | 0d |  |  |  |  |
| 96 | 1.2.1.2.5.5 | UC Report on Work Accomplished | 1d | 2007-06-12 | 2007-06-12 | 95 |  |  |  | 21d | 0d |  |  |  |  |
| 97 | 1.2.1.2.5.6 | UC Validate File for Submission | 1d | 2007-06-13 | 2007-06-13 | 96 |  |  |  | 21d | 0d |  |  |  |  |
| 98 | 1.2.1.2.5.7 | UC Download Project Data | 1d | 2007-06-14 | 2007-06-14 | 97 |  |  |  | 21d | 0d |  |  |  |  |
| 99 | 1.2.1.2.5.8 | UC Login | 1d | 2007-06-15 | 2007-06-15 | 98 |  |  |  | 21d | 0d |  |  |  |  |
| 100 | 1.2.1.2.5.9 | UC Manage Users | 1d | 2007-06-18 | 2007-06-18 | 99 |  |  |  | 21d | 0d |  |  |  |  |
| 101 | 1.2.1.2.5.10 | UC Manage Institutional Groups | 1d | 2007-06-19 | 2007-06-19 | 100 |  |  |  | 21d | 0d |  |  |  |  |
| 102 | 1.2.1.2.5.11 | UC Wireframes | 2d | 2007-06-20 | 2007-06-21 | 101 |  |  |  | 21d | 0d |  |  |  |  |
| 103 | 1.2.1.2.5.12 | Stylesheet Framework | 2d | 2007-06-22 | 2007-06-25 | 102 |  |  |  | 21d |  |  |  |  |  |

| ID | WBS | Task | Type | Duration | Start | Finish | Predecessors | Total slack | Free slack | Constraint |
| --- | --- | --- | --- | --- | --- | --- | --- | --- | --- | --- |
| 104 | 1.2.1.3 | **Analysis and Design** |  | 11d | 2007-06-11 | 2007-06-25 |  | 19d |  |  |
| 105 | 1.2.1.3.1 | Targeted Use Case Analysis and Design |  | 5d | 2007-06-11 | 2007-06-15 | 94 | 19d | 0d |  |
| 106 | 1.2.1.3.2 | Grid Strategy |  | 5d | 2007-06-18 | 2007-06-22 | 105 | 22d |  |  |
| 107 | 1.2.1.3.3 | Parsing Strategy |  | 3d | 2007-06-18 | 2007-06-20 | 105 | 19d | 0d |  |
| 108 | 1.2.1.3.4 | Binary Storage |  | 3d | 2007-06-18 | 2007-06-20 | 105 | 19d | 0d |  |
| 109 | 1.2.1.3.5 | 1.6 Data Migration Strategy |  | 3d | 2007-06-18 | 2007-06-20 | 105 | 21d | 0d |  |
| 110 | 1.2.1.3.6 | **Finalize Deliverables** |  | 3d | 2007-06-21 | 2007-06-25 |  | 21d |  |  |
| 111 | 1.2.1.3.6.1 | Update Software Architecture Document |  | 3d | 2007-06-21 | 2007-06-25 | 109 | 21d |  |  |
| 112 | 1.2.1.4 | **Implementation** |  | 19d | 2007-06-01 | 2007-06-27 |  | 19d |  |  |
| 113 | 1.2.1.4.1 | Implement UC Import Project Data |  | 5d | 2007-06-21 | 2007-06-27 | 107 | 19d |  |  |
| 114 | 1.2.1.4.2 | Implement UC Validate File For Submission |  | 5d | 2007-06-18 | 2007-06-22 | 105 | 22d |  |  |
| 115 | 1.2.1.4.3 | Implement UC Download Project Data |  | 5d | 2007-06-21 | 2007-06-27 | 108 | 19d |  |  |
| 116 | 1.2.1.4.4 | Implement Login |  | 2d | 2007-06-01 | 2007-06-04 |  | 31d | 0d | start no earlier than 2007-06-01 |
| 117 | 1.2.1.4.5 | Implement Manage Users |  | 5d | 2007-06-05 | 2007-06-11 | 116 | 31d |  |  |
| 118 | 1.2.1.5 | **Test** |  | 8d | 2007-06-18 | 2007-06-27 |  | 19d |  |  |
| 119 | 1.2.1.5.1 | Create Junit Test for targeted UC's |  | 3d | 2007-06-18 | 2007-06-20 | 105 | 19d | 0d |  |
| 120 | 1.2.1.5.2 | Create Selenium Tests for targeted Ucs |  | 2d | 2007-06-21 | 2007-06-22 | 119 | 21d | 0d |  |
| 121 | 1.2.1.5.3 | Incorporate Test Cases into Gforge |  | 1d | 2007-06-25 | 2007-06-25 | 120 | 21d |  |  |
| 122 | 1.2.1.5.4 | Manage Test Assets |  | 3d | 2007-06-21 | 2007-06-25 | 119 | 19d | 0d |  |
| 123 | 1.2.1.5.5 | **Finalize Deliverables** |  | 2d | 2007-06-26 | 2007-06-27 |  | 19d |  |  |
| 124 | 1.2.1.5.5.1 | Release Test Plan |  | 2d | 2007-06-26 | 2007-06-27 | 122 | 19d |  |  |
| 125 | 1.2.1.6 | **Environment** |  | 1d | 2007-06-26 | 2007-06-26 |  | 20d |  |  |
| 126 | 1.2.1.6.1 | Integrate Test Suite into Gforge |  | 1d | 2007-06-26 | 2007-06-26 | 122 | 20d |  |  |
| 127 | 1.2.1.7 | **Configuration and Change Management** |  | 25d | 2007-05-22 | 2007-06-25 |  | 21d |  |  |
| 128 | 1.2.1.7.1 | Manage Gforge Content |  | 25d | 2007-05-22 | 2007-06-25 |  | 21d |  | start no earlier than 2007-05-22 |
| 129 | 1.2.1.8 | Elaboration 1 Complete | milestone | 0d | 2007-06-27 | 2007-06-27 |  | 0d |  | start no earlier than 2007-06-27 |

| ID | WBS | Task | Type | Duration | Start | Finish | Predecessors | Baseline start | Baseline finish | Baseline duration | Total slack |
| --- | --- | --- | --- | --- | --- | --- | --- | --- | --- | --- | --- |
| 130 | 1.2.2 | **Elaboration - Iteration 2** |  | 20d | 2007-06-27 | 2007-07-24 | 129 | 2007-05-15 | 2007-05-16 | 1d? | 0d |
| 131 | 1.2.2.1 | Project Management |  | 20d | 2007-06-27 | 2007-07-24 |  |  |  |  | 0d |
| 132 | 1.2.2.2 | E1 Post Mortem |  | 1d | 2007-06-27 | 2007-06-27 | 129 |  |  |  | 19d |
| 133 | 1.2.2.3 | Requirements |  | 20d | 2007-06-27 | 2007-07-24 |  |  |  |  | 0d |
| 134 | 1.2.2.4 | Analysis and Design |  | 20d | 2007-06-27 | 2007-07-24 |  |  |  |  | 0d |
| 135 | 1.2.2.5 | Implementation |  | 20d | 2007-06-27 | 2007-07-24 |  |  |  |  | 0d |
| 136 | 1.2.2.6 | Test |  | 20d | 2007-06-27 | 2007-07-24 |  |  |  |  | 0d |
| 137 | 1.2.2.7 | Environment |  | 20d | 2007-06-27 | 2007-07-24 |  |  |  |  | 0d |
| 138 | 1.2.2.8 | Configuration and Change Management |  | 20d | 2007-06-27 | 2007-07-24 |  |  |  |  | 0d |
| 139 | 1.2.2.9 | Elaboration 2 Complete | milestone | 0d | 2007-07-24 | 2007-07-24 | 138 |  |  |  | 0d |
| 140 | 1.3 | **Construction Phase** |  | 40d | 2007-07-25 | 2007-09-18 | 75 | 2007-05-17 | 2007-05-18 | 1d? | 0d |
| 141 | 1.3.1 | **Construction - Iteration 1** |  | 20d | 2007-07-25 | 2007-08-21 |  | 2007-05-17 | 2007-05-18 | 1d? | 0d |
| 142 | 1.3.1.1 | Project Management |  | 20d | 2007-07-25 | 2007-08-21 |  |  |  |  | 20d |
| 143 | 1.3.1.2 | Requirements |  | 20d | 2007-07-25 | 2007-08-21 |  |  |  |  | 20d |
| 144 | 1.3.1.3 | Analysis and Design |  | 20d | 2007-07-25 | 2007-08-21 |  |  |  |  | 20d |
| 145 | 1.3.1.4 | Implementation |  | 20d | 2007-07-25 | 2007-08-21 |  |  |  |  | 20d |
| 146 | 1.3.1.5 | Test |  | 20d | 2007-07-25 | 2007-08-21 |  |  |  |  | 20d |
| 147 | 1.3.1.6 | Environment |  | 20d | 2007-07-25 | 2007-08-21 |  |  |  |  | 20d |
| 148 | 1.3.1.7 | Configuration and Change Management |  | 20d | 2007-07-25 | 2007-08-21 |  |  |  |  | 0d |
| 149 | 1.3.1.8 | Construction 1 Complete | milestone | 0d | 2007-08-21 | 2007-08-21 | 148 |  |  |  | 0d |
| 150 | 1.3.2 | **Construction - Iteration 2** |  | 20d | 2007-08-21 | 2007-09-18 | 149 | 2007-05-17 | 2007-05-18 | 1d? | 0d |
| 151 | 1.3.2.1 | Project Management |  | 20d | 2007-08-22 | 2007-09-18 |  |  |  |  | 0d |
| 152 | 1.3.2.2 | Requirements |  | 20d | 2007-08-22 | 2007-09-18 |  |  |  |  | 0d |
| 153 | 1.3.2.3 | Analysis and Design |  | 20d | 2007-08-22 | 2007-09-18 |  |  |  |  | 0d |
| 154 | 1.3.2.4 | Implementation |  | 20d | 2007-08-22 | 2007-09-18 |  |  |  |  | 0d |
| 155 | 1.3.2.5 | Test |  | 20d | 2007-08-22 | 2007-09-18 |  |  |  |  | 0d |
| 156 | 1.3.2.6 | Environment |  | 20d | 2007-08-22 | 2007-09-18 |  |  |  |  | 0d |
| 157 | 1.3.2.7 | Configuration and Change Management |  | 20d | 2007-08-22 | 2007-09-18 |  |  |  |  | 0d |
| 158 | 1.3.2.8 | Construction 2 Complete | milestone | 0d | 2007-08-21 | 2007-08-21 |  |  |  |  | 0d |

| ID | WBS | Task | Type | Duration | Start | Finish | Predecessors | Baseline start | Baseline finish | Baseline duration | Total slack |
| --- | --- | --- | --- | --- | --- | --- | --- | --- | --- | --- | --- |
| 159 | 1.3.3 | **Construction - Iteration 3** |  | 20d | 2007-08-22 | 2007-09-18 | 158 |  |  |  | 0d |
| 160 | 1.3.3.1 | Project Management |  | 20d | 2007-08-22 | 2007-09-18 |  |  |  |  | 0d |
| 161 | 1.3.3.2 | Requirements |  | 20d | 2007-08-22 | 2007-09-18 |  |  |  |  | 0d |
| 162 | 1.3.3.3 | Analysis and Design |  | 20d | 2007-08-22 | 2007-09-18 |  |  |  |  | 0d |
| 163 | 1.3.3.4 | Implementation |  | 20d | 2007-08-22 | 2007-09-18 |  |  |  |  | 0d |
| 164 | 1.3.3.5 | Test |  | 20d | 2007-08-22 | 2007-09-18 |  |  |  |  | 0d |
| 165 | 1.3.3.6 | Environment |  | 20d | 2007-08-22 | 2007-09-18 |  |  |  |  | 0d |
| 166 | 1.3.3.7 | Configuration and Change Management |  | 20d | 2007-08-22 | 2007-09-18 |  |  |  |  | 0d |
| 167 | 1.3.3.8 | Construction Iteration 3 Complete | milestone | 0d | 2007-09-18 | 2007-09-18 | 166 | 2007-05-17 | 2007-05-18 | 1d? | 0d |
| 168 | 1.4 | **Transition Phase** |  | 40d | 2007-09-19 | 2007-11-13 | 140 | 2007-05-18 | 2007-05-21 | 1d? | 0d |
| 169 | 1.4.1 | Transition - Iteration 1 | milestone | 20d | 2007-09-19 | 2007-10-16 |  | 2007-05-18 | 2007-05-21 | 1d? | 0d |
| 170 | 1.4.2 | Transition - Iteration 2 | milestone | 20d | 2007-10-17 | 2007-11-13 | 169 | 2007-05-18 | 2007-05-21 | 1d? | 0d |
